gantt
  title Nexiqon roadmap to the pilot gate (23 weeks from 9 Nov 2026)
  dateFormat YYYY-MM-DD
  axisFormat %d %b
  section Engineering
    P0 Platform setup          :p0, 2026-11-09, 3w
    P1 Platform foundation     :p1, after p0, 3w
    P2 Knowledge plane         :p2, after p1, 5w
    P3 Agent plane             :p3, after p2, 5w
    P4 Product + operations    :p4, after p3, 4w
    P5 Pilot readiness         :p5, after p4, 3w
  section UX
    Discovery + teardown       :u0, 2026-11-09, 3w
    Design system + shell      :u1, after u0, 3w
    Knowledge UI               :u2, after u1, 5w
    Builder + Inspector        :u3, after u2, 5w
    Widget + onboarding        :u4, after u3, 4w
    Final usability study      :u5, after u4, 3w
  section Business
    IP review                  :b1, 2026-11-09, 2w
    DPAs + model licences      :b2, 2026-11-16, 10w
    Privacy pack + pilot SOW   :b3, 2027-01-11, 10w
  section Milestones
    Design-partner preview (tentative) :milestone, m1, 2027-03-01, 0d
    Security reviewer booked   :milestone, m2, 2027-02-15, 0d
    Pilot gate                 :milestone, m3, 2027-04-19, 0d
